How a schedule from MS Project changed from version to version. A marks actual dates.

## Version 1 (saved 2012-09-06)

| ID | WBS | Task | Duration | Start | Finish | Predecessors | Total float | Constraint |
| --- | --- | --- | --- | --- | --- | --- | --- | --- |
| 1 | 1 | **SMS project** | 72d | 2012-09-10 | 2012-12-18 |  |  |  |
| 2 | 1.1 | **Initiating** | 5d | 2012-09-10 | 2012-09-14 |  | -1d |  |
| 3 |  | Generate project ideas | 1d | 2012-09-10 | 2012-09-10 |  | 3d |  |
| 4 | 1.1.2 | **Create Report 1: Project Introduction** | 3d | 2012-09-11 | 2012-09-13 |  | -1d |  |
| 5 |  | Repare Report 1 | 1d | 2012-09-11 | 2012-09-11 |  | -1d | start no earlier than 2012-09-11 |
| 6 |  | Update Report 1 | 1d | 2012-09-12 | 2012-09-12 | 5 | -1d |  |
| 7 |  | Review and finalize Report 1 | 0.5d | 2012-09-13 | 2012-09-13 | 6 | -1d |  |
| 8 |  | Release Report 1 | 0.5d | 2012-09-13 | 2012-09-13 | 7 | -1d |  |
| 9 |  | Hold kick-off meeting | 1d | 2012-09-14 | 2012-09-14 | 4 | -1d |  |
| 10 | 1.2 | **Planing** | 5d | 2012-09-14 | 2012-09-20 | 2 |  |  |
| 11 |  | Create project plan | 1d | 2012-09-14 | 2012-09-14 |  | 0d |  |
| 12 | 1.2.2 | **Create Report 2: Software Project Management Plan** | 4d | 2012-09-17 | 2012-09-20 | 11 | 0d |  |
| 13 |  | Repare Report 2 | 1d | 2012-09-17 | 2012-09-17 |  | 0d |  |
| 14 |  | Update Report 2 | 1d | 2012-09-18 | 2012-09-18 | 13 | 0d |  |
| 15 |  | Review and finalize Report 2 | 1d | 2012-09-19 | 2012-09-19 | 14 | 0d |  |
| 16 |  | Release Report 2 | 1d | 2012-09-20 | 2012-09-20 | 15 | 0d |  |
| 17 | 1.3 | **Executing** | 58d | 2012-09-21 | 2012-12-11 | 10 |  |  |
| 18 | 1.3.1 | **Analysis** | 7d | 2012-09-21 | 2012-10-01 |  |  |  |
| 19 |  | Research Yakindu Toolkit | 2d | 2012-09-21 | 2012-09-24 |  | 5d |  |
| 20 |  | Research and buy Microchip | 2d | 2012-09-21 | 2012-09-24 |  | 5d |  |
| 21 | 1.3.1.3 | **Write requirements** | 3d | 2012-09-21 | 2012-09-25 |  | 0d |  |
| 22 |  | Repare question list | 1d | 2012-09-21 | 2012-09-21 |  | 0d |  |
| 23 |  | Get requirements from customer | 2d | 2012-09-24 | 2012-09-25 | 22 | 0d |  |
| 24 | 1.3.1.4 | **Create Report 3: Software Requirement Specification (SRS)** | 4d | 2012-09-26 | 2012-10-01 | 21 |  |  |
| 25 |  | Repare Report 3 | 1d | 2012-09-26 | 2012-09-26 | 21 | 0d |  |
| 26 |  | Update Report 3 | 1d | 2012-09-27 | 2012-09-27 | 25 | 0d |  |
| 27 |  | Review and finalize Report 3 | 1d | 2012-09-28 | 2012-09-28 | 26 | 0d |  |
| 28 |  | Release Report 3 | 1d | 2012-10-01 | 2012-10-01 | 27 | 0d |  |
| 29 | 1.3.2 | **Design** | 9d | 2012-10-02 | 2012-10-12 | 18 |  |  |
| 30 |  | Database design | 2d | 2012-10-02 | 2012-10-03 |  | 0d | start no earlier than 2012-10-02 |
| 31 |  | Architecture design | 2d | 2012-10-02 | 2012-10-03 |  | 0d |  |
| 32 |  | Detailed design | 2d | 2012-10-02 | 2012-10-03 |  | 0d |  |
| 33 | 1.3.2.4 | **Design Embeebed device** | 4d | 2012-10-04 | 2012-10-09 |  |  |  |
| 34 |  | Design electric device board | 3d | 2012-10-04 | 2012-10-08 |  |  |  |
| 35 |  | Print board | 1d | 2012-10-09 | 2012-10-09 | 34 |  |  |
| 36 | 1.3.2.5 | **Create Yakindu Statecharts** | 2d | 2012-10-04 | 2012-10-05 | 30, 31, 32 |  |  |
| 37 |  | Statecharts for SMO device | 2d | 2012-10-04 | 2012-10-05 |  | 0d |  |
| 38 |  | Statecharts for SMR device | 2d | 2012-10-04 | 2012-10-05 |  | 0d |  |
| 39 |  | Statecharts for SMC device | 2d | 2012-10-04 | 2012-10-05 |  | 0d |  |
| 40 | 1.3.2.6 | **Create Report 4: Software Design Description (SDD)** | 5d | 2012-10-08 | 2012-10-12 | 30, 31, 32 |  |  |
| 41 |  | Repare Report 4 | 1d | 2012-10-08 | 2012-10-08 |  | 1d | start no earlier than 2012-10-06 |
| 42 |  | Update Report 4 | 1d | 2012-10-09 | 2012-10-09 | 41 | 1d |  |
| 43 |  | Review and finalize Report 4 | 1d | 2012-10-10 | 2012-10-10 | 42 | 1d |  |
| 44 |  | Release Report 4 | 1d | 2012-10-11 | 2012-10-11 | 43 | 1d |  |
| 45 | 1.3.3 | **Implementation** | 29d | 2012-10-12 | 2012-11-21 | 29 |  |  |
| 46 |  | Create coding framework | 2d | 2012-10-12 | 2012-10-15 |  | 0d |  |
| 47 | 1.3.3.2 | **Coding system on Hardware Device** | 13d | 2012-10-16 | 2012-11-01 | 46 |  |  |
| 48 | 1.3.3.2.1 | **Coding for SMO device** | 6d | 2012-10-16 | 2012-10-23 | 46 |  |  |
| 49 |  | Generate code C language | 2d | 2012-10-16 | 2012-10-17 |  | 0d |  |
| 50 |  | Convert to assembly language | 2d | 2012-10-18 | 2012-10-19 | 49 | 0d |  |
| 51 |  | Embed to hardware device | 2d | 2012-10-22 | 2012-10-23 | 50 | 0d |  |
| 52 | 1.3.3.2.2 | **Coding for SMR device** | 7d | 2012-10-24 | 2012-11-01 | 48 |  |  |
| 53 |  | Generate code C language | 2d | 2012-10-24 | 2012-10-25 |  | 1d |  |
| 54 |  | Convert to assembly language | 2d | 2012-10-26 | 2012-10-29 | 53 | 1d |  |
| 55 |  | Embed to hardware device | 2d | 2012-10-30 | 2012-10-31 | 54 | 1d |  |
| 56 | 1.3.3.2.3 | **Coding for SMC device** | 7d | 2012-10-24 | 2012-11-01 | 48 |  |  |
| 57 |  | Generate code C language | 2d | 2012-10-24 | 2012-10-25 |  | 1d |  |
| 58 |  | Convert to assembly language | 2d | 2012-10-26 | 2012-10-29 | 57 | 1d |  |
| 59 |  | Embed to hardware device | 2d | 2012-10-30 | 2012-10-31 | 58 | 1d |  |
| 60 | 1.3.3.3 | **Coding system on Personal Computer** | 14d | 2012-11-02 | 2012-11-21 | 47 |  |  |
| 61 |  | Code Management feature | 6d | 2012-11-02 | 2012-11-09 |  | 0d |  |
| 62 |  | Code Billing feature | 6d | 2012-11-12 | 2012-11-19 | 61 | 0d |  |
| 63 |  | Code Statistics feature | 6d | 2012-11-12 | 2012-11-19 | 61 | 0d |  |
| 64 |  | Build and Review code | 2d | 2012-11-20 | 2012-11-21 | 61, 62, 63 |  |  |
| 65 |  | Create Software User Mannual (SUM) document | 2d | 2012-10-12 | 2012-10-15 |  | 27d |  |
| 66 | 1.3.4 | **Testing** | 11d | 2012-11-22 | 2012-12-06 | 45 |  |  |
| 67 |  | Write system test case | 1d | 2012-11-22 | 2012-11-22 |  | 0d |  |
| 68 |  | Execute system test | 3d | 2012-11-23 | 2012-11-27 | 67 | 0d |  |
| 69 |  | System test completed | 1d | 2012-11-28 | 2012-11-28 | 68 | 0d |  |
| 70 | 1.3.4.4 | **Create Report 5: Software Test Documentation (STD)** | 4d | 2012-11-29 | 2012-12-04 | 67, 56, 69 |  |  |

| ID | WBS | Task | Duration | Start | Finish | Predecessors | Total float |
| --- | --- | --- | --- | --- | --- | --- | --- |
| 71 |  | Repare Report 5 | 1d | 2012-11-29 | 2012-11-29 |  | 0d |
| 72 |  | Update Report 5 | 1d | 2012-11-30 | 2012-11-30 | 71 | 0d |
| 73 |  | Review and finalize Report 5 | 1d | 2012-12-03 | 2012-12-03 | 72 | 0d |
| 74 |  | Release Report 5 | 1d | 2012-12-04 | 2012-12-04 | 73 | 0d |
| 75 | 1.3.4.5 | **Create Report 6: Software User Manual (SUM)** | 5d | 2012-11-30 | 2012-12-06 |  |  |
| 76 |  | Repare Report 6 | 1d | 2012-11-30 | 2012-11-30 |  | 1d |
| 77 |  | Update Report 6 | 1d | 2012-12-03 | 2012-12-03 | 76 | 1d |
| 78 |  | Review and finalize Report 6 | 1d | 2012-12-04 | 2012-12-04 | 77 | 1d |
| 79 |  | Release Report 6 | 1d | 2012-12-05 | 2012-12-05 | 78 | 1d |
| 80 | 1.3.5 | **Deployment** | 4d | 2012-12-06 | 2012-12-11 | 66 |  |
| 81 |  | Input initial data | 2d | 2012-12-06 | 2012-12-07 |  | 1d |
| 82 |  | System deployed | 1d | 2012-12-10 | 2012-12-10 | 81 | 1d |
| 83 | 1.4 | **Closing** | 5d | 2012-12-12 | 2012-12-18 | 17 |  |
| 84 |  | Prepare final project presentation | 4d | 2012-12-12 | 2012-12-17 |  | 0.75d |
| 85 |  | Project presentation | 2h | 2012-12-18 | 2012-12-18 | 84 | 0.75d |
| 86 |  | Project completed | 0d | 2012-12-18 | 2012-12-18 | 85 | 0.75d |

## Version 2 (saved 2012-09-12)

Last finish stays 2012-12-18.

Changed:

| ID | Task | Other |
| --- | --- | --- |
| 14 | Update Report 2 | resources DucHA; CuongNT; KhoiMN → DucHA; CuongNT; KhoiMN; TrungTM |
| 15 | Review and finalize Report 2 | resources TrungTM → ThanhLCM |
| 20 | Research and buy Microchip | resources KhoiMN → DucHA |
| 22 | Repare question list | resources DucHA → KhoiMN |
| 25 | Repare Report 3 | resources ThanhLCM; DucHA → ThanhLCM |
| 26 | Update Report 3 | resources TrungTM; DucHA; CuongNT → TrungTM; DucHA; CuongNT; KhoiMN |
| 27 | Review and finalize Report 3 | resources KhoiMN → DucHA |
| 41 | Repare Report 4 | resources TrungTM; KhoiMN → DucHA |
| 42 | Update Report 4 | resources CuongNT; DucHA → CuongNT; DucHA; TrungTM |
| 71 | Repare Report 5 | resources TrungTM → ThanhLCM |
| 72 | Update Report 5 | resources CuongNT; KhoiMN → CuongNT; KhoiMN; TrungTM; DucHA |
| 73 | Review and finalize Report 5 | resources DucHA → TrungTM |
| 76 | Repare Report 6 | resources TrungTM → ThanhLCM |
| 77 | Update Report 6 | resources CuongNT; KhoiMN → CuongNT; KhoiMN; DucHA |

## Version 3 (saved 2012-09-24)

Last finish stays 2012-12-18.

Changed:

| ID | Task | Other |
| --- | --- | --- |
| 25 | Repare Report 3 | resources ThanhLCM → TrungTM |
